# SEATS project

Schedule from MS Project XML, 2026-08-03 to 2028-07-28.

## Calendars

- Standard: Mon-Fri 08:00-12:00, 13:00-17:00; Sat-Sun off. Exceptions (off unless hours are given): 2026-12-21 to 2027-01-01.

## Resources

| Resource | Group | Unit | Rate |
| --- | --- | --- | --- |
| Boonnisa Tangjitpermkwamdee | Project Manager, Change Control Manager |  | 350 |
| Sirapatr Chalermwattanatrai | System Analyst, Software Architect |  | 350 |
| Chawanakorn Sanannam | Requirements Specifier, User-Interface Designer, Designer / Implementer |  | 300 |
| Watayut Aiamanan | Quality Assurance, Test Designer / Tester, Implementer (Construction) |  | 300 |
| Test devices (Android phone and 10-inch tablet) |  | unit | 15000 |
| Development and staging hosting (month) |  | unit | 300 |
| Production hosting (month) |  | unit | 700 |
| Domain name and TLS certificate (year) |  | unit | 1200 |
| Company registration and legal documents |  | unit | 15000 |

## Schedule

| ID | WBS | Task | Type | Duration | Start | Finish | Predecessors | Constraint | Resources | Work |
| --- | --- | --- | --- | --- | --- | --- | --- | --- | --- | --- |
| 1 | 1 | Project Management |  |  | 2026-08-03 | 2028-07-28 |  |  |  |  |
| 11 | 2 | Inception (I1, I2) |  |  | 2026-08-03 | 2026-09-02 |  |  |  |  |
| 16 | 3 | Elaboration (E1, E2) |  |  | 2026-09-03 | 2026-10-23 |  |  |  |  |
| 25 | 4 | Release 1.0 Core: Construction (C1, C2) |  |  | 2026-10-26 | 2027-02-26 |  |  |  |  |
| 36 | 5 | Release 1.0 Core: Transition (T1) |  |  | 2027-03-01 | 2027-04-02 |  |  |  |  |
| 41 | 6 | Release 2.0 Growth (C3, T2) |  |  | 2027-04-05 | 2027-07-30 |  |  |  |  |
| 49 | 7 | Pilot operation (P1) |  |  | 2027-08-02 | 2028-07-28 |  |  |  |  |
| 51 | 8 | **Release 2.1 Product (C4, T3)** |  |  | 2027-08-02 | 2028-02-11 |  |  |  |  |
| 2 | 8.1 | 1.1 Project plans and baselines |  | 23d | 2026-08-03 | 2026-09-02 |  | start no earlier than 2026-08-03 | Boonnisa Tangjitpermkwamdee [10.87%]; Development and staging hosting (month) [1 unit] | 20h |
| 3 | 8.2 | 1.2 Risk List and Development Case |  | 18d | 2026-08-10 | 2026-09-02 | 12SS | start no earlier than 2026-08-10 | Boonnisa Tangjitpermkwamdee [2.78%]; Watayut Aiamanan [5.56%] | 12h |
| 4 | 8.3 | 1.3 Iteration assessments and change control, Elaboration |  | 37d | 2026-09-03 | 2026-10-23 | 2 | start no earlier than 2026-09-03 | Boonnisa Tangjitpermkwamdee [9.46%]; Development and staging hosting (month) [2 unit] | 28h |
| 5 | 8.4 | 1.4 Iteration assessments and change control, Release 1.0 Construction |  | 80d | 2026-10-26 | 2027-02-26 | 4 | start no earlier than 2026-10-26 | Boonnisa Tangjitpermkwamdee [10%]; Development and staging hosting (month) [4 unit] | 64h |
| 6 | 8.5 | 1.5 Iteration assessments and change control, Release 1.0 Transition |  | 25d | 2027-03-01 | 2027-04-02 | 5 | start no earlier than 2027-03-01 | Boonnisa Tangjitpermkwamdee [6%]; Development and staging hosting (month) [1 unit] | 12h |
| 7 | 8.6 | 1.6 Iteration assessments and change control, Release 2.0 |  | 85d | 2027-04-05 | 2027-07-30 | 6 | start no earlier than 2027-04-05 | Boonnisa Tangjitpermkwamdee [6.76%]; Development and staging hosting (month) [4 unit]; Production hosting (month) [4 unit] | 46h |
| 8 | 8.7 | 1.7 Iteration assessments and change control, Release 2.1 |  | 140d | 2027-08-02 | 2028-02-11 | 7 | start no earlier than 2027-08-02 | Boonnisa Tangjitpermkwamdee [2.5%] | 28h |
| 9 | 8.8 | 1.8 Pilot KPI reports and reviews |  | 255d | 2027-08-02 | 2028-07-21 | 48 | start no earlier than 2027-08-02 | Boonnisa Tangjitpermkwamdee [0.59%]; Watayut Aiamanan [0.39%] | 20h |
| 10 | 8.9 | 1.9 Pilot review, expansion decision and close-out |  | 5d | 2028-07-24 | 2028-07-28 | 9FF, 57 | start no earlier than 2028-07-24 | Boonnisa Tangjitpermkwamdee [20%]; Sirapatr Chalermwattanatrai [10%]; Watayut Aiamanan [10%] | 16h |
| 12 | 8.10 | 2.1 Stakeholder requests and problem analysis |  | 15d | 2026-08-03 | 2026-08-21 |  | start no earlier than 2026-08-03 | Boonnisa Tangjitpermkwamdee [3.33%]; Sirapatr Chalermwattanatrai [13.33%]; Chawanakorn Sanannam [6.67%] | 28h |
| 13 | 8.11 | 2.2 Vision and Glossary |  | 18d | 2026-08-10 | 2026-09-02 | 12SS | start no earlier than 2026-08-10 | Sirapatr Chalermwattanatrai [13.89%]; Chawanakorn Sanannam [8.33%] | 32h |
| 14 | 8.12 | 2.3 Use-case model and release plan |  | 7d | 2026-08-25 | 2026-09-02 | 13SS | start no earlier than 2026-08-25 | Sirapatr Chalermwattanatrai [7.14%]; Chawanakorn Sanannam [21.43%]; Watayut Aiamanan [7.14%] | 20h |
| 15 | 8.13 | 2.4 Review records and LCO package |  | 5d | 2026-08-27 | 2026-09-02 | 13SS, 14SS | start no earlier than 2026-08-27 | Boonnisa Tangjitpermkwamdee [10%]; Watayut Aiamanan [30%] | 16h |
| 17 | 8.14 | 3.1 Use-case specifications |  | 10d | 2026-09-03 | 2026-09-16 | 15 | start no earlier than 2026-09-03 | Sirapatr Chalermwattanatrai [20%]; Chawanakorn Sanannam [40%]; Watayut Aiamanan [5%] | 52h |
| 18 | 8.15 | 3.2 Software Requirements Specification and Supplementary Specification |  | 22d | 2026-09-10 | 2026-10-09 | 17SS | start no earlier than 2026-09-10 | Boonnisa Tangjitpermkwamdee [2.27%]; Sirapatr Chalermwattanatrai [6.82%]; Chawanakorn Sanannam [15.91%]; Watayut Aiamanan [4.55%] | 52h |
| 19 | 8.16 | 3.3 Analysis model and Software Architecture Document |  | 22d | 2026-09-17 | 2026-10-16 | 17 | start no earlier than 2026-09-17 | Boonnisa Tangjitpermkwamdee [2.27%]; Sirapatr Chalermwattanatrai [27.27%]; Chawanakorn Sanannam [4.55%] | 60h |
| 20 | 8.17 | 3.4 User-interface prototype |  | 17d | 2026-09-24 | 2026-10-16 | 17 | start no earlier than 2026-09-24 | Sirapatr Chalermwattanatrai [2.94%]; Chawanakorn Sanannam [17.65%]; Watayut Aiamanan [2.94%] | 32h |
| 21 | 8.18 | 3.5 Payment gateway and LINE sandbox |  | 17d | 2026-09-17 | 2026-10-09 | 15 | start no earlier than 2026-09-17 | Boonnisa Tangjitpermkwamdee [5.88%]; Sirapatr Chalermwattanatrai [8.82%]; Chawanakorn Sanannam [2.94%] | 24h |
| 22 | 8.19 | 3.6 Test plan and test cases |  | 22d | 2026-09-24 | 2026-10-23 | 17 | start no earlier than 2026-09-24 | Boonnisa Tangjitpermkwamdee [2.27%]; Watayut Aiamanan [18.18%] | 36h |
| 23 | 8.20 | 3.7 Requirements reviews, SRS baseline and LCA package |  | 10d | 2026-10-12 | 2026-10-23 | 18, 19SS, 20SS, 22SS | start no earlier than 2026-10-12 | Boonnisa Tangjitpermkwamdee [10%]; Sirapatr Chalermwattanatrai [5%]; Watayut Aiamanan [20%] | 28h |
| 24 | 8.21 | 3.8 Scope baseline, estimates, schedule and cost baseline |  | 10d | 2026-10-12 | 2026-10-23 | 18SS | start no earlier than 2026-10-12 | Boonnisa Tangjitpermkwamdee [10%] | 8h |
| 26 | 8.22 | 4.1 Concert rounds, zones and packages |  | 15d | 2026-10-26 | 2026-11-13 | 23 | start no earlier than 2026-10-26 | Boonnisa Tangjitpermkwamdee [6.67%]; Sirapatr Chalermwattanatrai [13.33%]; Chawanakorn Sanannam [26.67%]; Watayut Aiamanan [6.67%] | 64h |
| 27 | 8.23 | 4.2 Table map, selection and hold |  | 20d | 2026-11-02 | 2026-11-27 | 26SS | start no earlier than 2026-11-02 | Boonnisa Tangjitpermkwamdee [5%]; Sirapatr Chalermwattanatrai [20%]; Chawanakorn Sanannam [22.5%]; Watayut Aiamanan [10%]; Test devices (Android phone and 10-inch tablet) [1 unit] | 92h |
| 28 | 8.24 | 4.3 Gateway payment and callback |  | 25d | 2026-11-16 | 2026-12-18 | 21, 27SS | start no earlier than 2026-11-16 | Boonnisa Tangjitpermkwamdee [4%]; Sirapatr Chalermwattanatrai [20%]; Chawanakorn Sanannam [16%]; Watayut Aiamanan [12%] | 104h |
| 29 | 8.25 | 4.4 LINE sign-in, staff accounts and role access |  | 15d | 2026-11-16 | 2026-12-04 | 23 | start no earlier than 2026-11-16 | Sirapatr Chalermwattanatrai [13.33%]; Chawanakorn Sanannam [13.33%]; Watayut Aiamanan [6.67%] | 40h |
| 30 | 8.26 | 4.5 C1 integration and iteration test |  | 10d | 2026-12-07 | 2026-12-18 | 26, 27, 28SS, 29 | start no earlier than 2026-12-07 | Boonnisa Tangjitpermkwamdee [10%]; Sirapatr Chalermwattanatrai [10%]; Chawanakorn Sanannam [10%]; Watayut Aiamanan [30%] | 48h |
| 31 | 8.27 | 4.6 QR e-ticket and transactional messages |  | 15d | 2027-01-04 | 2027-01-22 | 30 | start no earlier than 2027-01-04 | Sirapatr Chalermwattanatrai [13.33%]; Chawanakorn Sanannam [26.67%]; Watayut Aiamanan [6.67%] | 56h |
| 32 | 8.28 | 4.7 Door check-in and name lookup |  | 20d | 2027-01-11 | 2027-02-05 | 31SS | start no earlier than 2027-01-11 | Boonnisa Tangjitpermkwamdee [5%]; Sirapatr Chalermwattanatrai [10%]; Chawanakorn Sanannam [20%]; Watayut Aiamanan [10%] | 72h |
| 33 | 8.29 | 4.8 Live booking view and exception handling |  | 20d | 2027-01-18 | 2027-02-12 | 31 | start no earlier than 2027-01-18 | Boonnisa Tangjitpermkwamdee [5%]; Sirapatr Chalermwattanatrai [20%]; Chawanakorn Sanannam [20%]; Watayut Aiamanan [10%] | 88h |
| 34 | 8.30 | 4.9 Audit trail, backup, consent and push budget |  | 15d | 2027-01-25 | 2027-02-12 | 31 | start no earlier than 2027-01-25 | Boonnisa Tangjitpermkwamdee [6.67%]; Sirapatr Chalermwattanatrai [13.33%]; Chawanakorn Sanannam [16.67%]; Watayut Aiamanan [6.67%] | 52h |
| 35 | 8.31 | 4.10 Load test, system test and IOC package |  | 15d | 2027-02-08 | 2027-02-26 | 32, 33, 34 | start no earlier than 2027-02-08 | Boonnisa Tangjitpermkwamdee [6.67%]; Sirapatr Chalermwattanatrai [26.67%]; Chawanakorn Sanannam [13.33%]; Watayut Aiamanan [53.33%] | 120h |
| 37 | 8.32 | 5.1 Acceptance tests of Release 1.0 |  | 10d | 2027-03-01 | 2027-03-12 | 35 | start no earlier than 2027-03-01 | Boonnisa Tangjitpermkwamdee [10%]; Sirapatr Chalermwattanatrai [10%]; Chawanakorn Sanannam [15%]; Watayut Aiamanan [35%] | 56h |
| 38 | 8.33 | 5.2 Training and user guide |  | 10d | 2027-03-08 | 2027-03-19 | 37SS | start no earlier than 2027-03-08 | Boonnisa Tangjitpermkwamdee [10%]; Chawanakorn Sanannam [20%]; Watayut Aiamanan [5%] | 28h |
| 39 | 8.34 | 5.3 Production set-up and data migration |  | 10d | 2027-03-15 | 2027-03-26 | 37 | start no earlier than 2027-03-15 | Sirapatr Chalermwattanatrai [30%]; Chawanakorn Sanannam [12.5%]; Watayut Aiamanan [10%]; Domain name and TLS certificate (year) [1 unit]; Production hosting (month) [1 unit] | 42h |
| 40 | 8.35 | 5.4 Pilot concert nights and go-live of Release 1.0 |  | 10d | 2027-03-22 | 2027-04-02 | 38, 39 | start no earlier than 2027-03-22 | Boonnisa Tangjitpermkwamdee [15%]; Sirapatr Chalermwattanatrai [10%]; Chawanakorn Sanannam [15%]; Watayut Aiamanan [25%] | 52h |
| 42 | 8.36 | 6.1 Scheduled reminders |  | 25d | 2027-04-05 | 2027-05-07 | 40 | start no earlier than 2027-04-05 | Boonnisa Tangjitpermkwamdee [4%]; Sirapatr Chalermwattanatrai [16%]; Chawanakorn Sanannam [20%]; Watayut Aiamanan [10%] | 100h |
| 43 | 8.37 | 6.2 Grace extension and waitlist |  | 30d | 2027-04-26 | 2027-06-04 | 42SS | start no earlier than 2027-04-26 | Boonnisa Tangjitpermkwamdee [3.33%]; Sirapatr Chalermwattanatrai [16.67%]; Chawanakorn Sanannam [20%]; Watayut Aiamanan [11.67%] | 124h |
| 44 | 8.38 | 6.3 Booking transfer |  | 15d | 2027-05-17 | 2027-06-04 | 42 | start no earlier than 2027-05-17 | Sirapatr Chalermwattanatrai [13.33%]; Chawanakorn Sanannam [20%]; Watayut Aiamanan [10%] | 52h |
| 45 | 8.39 | 6.4 Reports and Excel export |  | 20d | 2027-05-24 | 2027-06-18 | 42 | start no earlier than 2027-05-24 | Boonnisa Tangjitpermkwamdee [5%]; Sirapatr Chalermwattanatrai [15%]; Chawanakorn Sanannam [20%]; Watayut Aiamanan [10%] | 80h |
| 46 | 8.40 | 6.5 C3 integration and system test |  | 15d | 2027-06-07 | 2027-06-25 | 43, 44, 45 | start no earlier than 2027-06-07 | Boonnisa Tangjitpermkwamdee [10%]; Sirapatr Chalermwattanatrai [26.67%]; Chawanakorn Sanannam [20%]; Watayut Aiamanan [36.67%] | 112h |
| 47 | 8.41 | 6.6 Acceptance tests and training on Release 2.0 |  | 15d | 2027-06-28 | 2027-07-16 | 46 | start no earlier than 2027-06-28 | Boonnisa Tangjitpermkwamdee [6.67%]; Sirapatr Chalermwattanatrai [11.67%]; Chawanakorn Sanannam [20%]; Watayut Aiamanan [25%] | 76h |
| 48 | 8.42 | 6.7 Release 2.0 deployment and first concert nights |  | 15d | 2027-07-12 | 2027-07-30 | 47SS | start no earlier than 2027-07-12 | Boonnisa Tangjitpermkwamdee [10%]; Sirapatr Chalermwattanatrai [13.33%]; Chawanakorn Sanannam [13.33%]; Watayut Aiamanan [16.67%] | 64h |
| 50 | 8.43 | 7.1 Concert-night support and maintenance |  | 260d | 2027-08-02 | 2028-07-28 | 48 | start no earlier than 2027-08-02 | Chawanakorn Sanannam [2.31%]; Watayut Aiamanan [2.31%]; Production hosting (month) [12 unit] | 96h |
| 52 | 8.44 | 8.1 Multi-tenant data model and tenant isolation |  | 40d | 2027-08-02 | 2027-09-24 | 48 | start no earlier than 2027-08-02 | Sirapatr Chalermwattanatrai [12.5%]; Chawanakorn Sanannam [12.5%]; Watayut Aiamanan [5%] | 96h |
| 53 | 8.45 | 8.2 Plans, limits and tier enforcement |  | 30d | 2027-09-20 | 2027-10-29 | 52 | start no earlier than 2027-09-20 | Sirapatr Chalermwattanatrai [8.33%]; Chawanakorn Sanannam [16.67%]; Watayut Aiamanan [8.33%] | 80h |
| 54 | 8.46 | 8.3 Subscription billing and company set-up |  | 30d | 2027-10-25 | 2027-12-03 | 53SS | start no earlier than 2027-10-25 | Boonnisa Tangjitpermkwamdee [3.33%]; Sirapatr Chalermwattanatrai [10%]; Chawanakorn Sanannam [16.67%]; Watayut Aiamanan [10%]; Company registration and legal documents [1 unit] | 96h |
| 55 | 8.47 | 8.4 Self-service onboarding and service administration |  | 30d | 2027-11-15 | 2027-12-24 | 53 | start no earlier than 2027-11-15 | Sirapatr Chalermwattanatrai [8.33%]; Chawanakorn Sanannam [16.67%]; Watayut Aiamanan [8.33%] | 80h |
| 56 | 8.48 | 8.5 Security, load and integration test of Release 2.1 |  | 25d | 2027-12-13 | 2028-01-14 | 54, 55SS | start no earlier than 2027-12-13 | Boonnisa Tangjitpermkwamdee [4%]; Sirapatr Chalermwattanatrai [6%]; Chawanakorn Sanannam [10%]; Watayut Aiamanan [14%] | 68h |
| 57 | 8.49 | 8.6 Migration of La Loy and release of the Free-plan sign-up |  | 20d | 2028-01-17 | 2028-02-11 | 56 | start no earlier than 2028-01-17 | Boonnisa Tangjitpermkwamdee [2.5%]; Sirapatr Chalermwattanatrai [7.5%]; Chawanakorn Sanannam [12.5%]; Watayut Aiamanan [12.5%] | 56h |
| 58 | 9 | M1 LCO: Lifecycle Objectives | milestone | 0d | 2026-09-02 | 2026-09-02 | 15 | start no earlier than 2026-09-02 |  |  |
| 59 | 10 | M2 LCA: Lifecycle Architecture, SRS baseline | milestone | 0d | 2026-10-23 | 2026-10-23 | 23 | start no earlier than 2026-10-23 |  |  |
| 60 | 11 | M3 IOC: Initial Operational Capability | milestone | 0d | 2027-02-26 | 2027-02-26 | 35 | start no earlier than 2027-02-26 |  |  |
| 61 | 12 | M4 Release 1.0 Core in operation | milestone | 0d | 2027-04-02 | 2027-04-02 | 40 | start no earlier than 2027-04-02 |  |  |
| 62 | 13 | M5 Release 2.0 Growth in operation | milestone | 0d | 2027-07-30 | 2027-07-30 | 48 | start no earlier than 2027-07-30 |  |  |
| 63 | 14 | M6 Release 2.1 in operation | milestone | 0d | 2028-02-11 | 2028-02-11 | 57 | start no earlier than 2028-02-11 |  |  |
| 64 | 15 | M7 Expansion decision, project closed | milestone | 0d | 2028-07-28 | 2028-07-28 | 10 | start no earlier than 2028-07-28 |  |  |

Notes:
- 2: Produce the business case, the project charter, the organization, the Software Development Plan and the iteration plans I1 and I2. Output: Business Case, charter, organization chart, SDP (draft), iteration plans
- 3: Write the initial Risk List (RISK-01 to RISK-14) and the Development Case that tailors RUP for the project. Output: Development Case v1, Risk List
- 4: Run the weekly status assessments, the E1 and E2 iteration assessments and the Change Control Board. Output: Status assessments, iteration assessments, change-request decisions
- 5: Run the weekly status assessments, the C1 and C2 iteration assessments and the Change Control Board. Output: Status assessments, iteration assessments, change-request decisions, Risk List updates
- 6: Run the weekly status assessments, the T1 assessment and the Change Control Board. Output: Status assessments, go-live record
- 7: Run the weekly status assessments, the C3 and T2 iteration assessments and the Change Control Board. Output: Status assessments, iteration assessments, change-request decisions
- 8: Run the status assessments, the C4 and T3 iteration assessments and the Change Control Board. Output: Status assessments, iteration assessments, change-request decisions
- 9: Collect the pilot KPIs of every concert night (booking time, double bookings, no-shows, check-in time, operating cost) and review them monthly with the Owner. Output: Monthly pilot KPI reports, waiting list of restaurants
- 10: Review the pilot year against the success criteria of the charter, prepare the expansion decision, record lessons learned and obtain sign-off. Output: Pilot review, expansion decision record, hand-over record, lessons learned, sign-off
- 12: Interview the Owner and the Manager, observe concert nights, record the stakeholder requests, the problems and their root causes (5 Whys). Output: Stakeholder Requests, problem and root-cause tables (workshop of RISK-01)
- 13: Write the Vision (problem statement, stakeholders, features F1 to F37 with value, cost and priority) and the Glossary. Output: Vision v1, Glossary
- 14: Outline the use-case model and assign the features to Release 1.0, Release 2.0 and Future. Output: Use-Case Model (outline), release plan
- 15: Review the Inception artifacts against the RUP checkpoints, record the Review Records and assemble the LCO review. Output: Review Records, LCO decision
- 17: Specify the two main use cases, Reserve a concert table and Check in with e-ticket, with the Manager and the Front Staff. Output: Use-case specifications
- 18: Write the SRS and the Supplementary Specification with the quality targets of Table 2.19 of Milestone 1. Output: SRS, Supplementary Specification
- 19: Produce the analysis model and the Software Architecture Document (LIFF front end, back office, application server, central database, LINE and gateway integration). Output: Analysis Model, SAD
- 20: Prototype the customer and back-office screens and have the Manager, the Front Staff and sample customers try them. Output: UI prototype, trial records
- 21: Open the gateway sandbox and the LINE Developers channel, verify the merchant onboarding and the LIFF and Messaging API settings (RISK-03, external dependency). Output: Sandbox accounts, onboarding checks, feasibility record
- 22: Write the test plan and the test cases of the two main use cases, including the load-test design for 5 transactions a second (RISK-05). Output: Test plan, test cases, load-test design
- 23: Review the SRS, the SAD, the prototype and the test plan against the checkpoints, baseline the SRS and assemble the LCA review. Output: Review Records, SRS baseline, LCA decision
- 24: Produce the scope statement, the WBS and dictionary, the effort, resource and cost estimates, the schedule and cost baseline (this document) and the Construction plan. Output: Scope statement, WBS, estimates, schedule and cost baseline, Construction plan
- 26: Design, implement and unit-test the management of concert rounds, zones, table types, packages and prices. Output: Back-office round and layout functions, unit tests
- 27: Implement the round list, the real-time table map, the table selection with the 15-minute hold and the automatic hold release. Output: Customer table map and hold, first-lock-wins locking
- 28: Integrate the hosted checkout, the booking terms, the payment webhook and the automatic confirmation of the booking. Output: Payment flow with automatic confirmation
- 29: Implement LINE Login, the back-office accounts and the role-based access of Manager, Front Staff and Owner. Output: Sign-in and staff accounts
- 30: Integrate the C1 increment, run the iteration tests and the C1 assessment. Output: Tested C1 increment, iteration assessment
- 31: Implement the QR e-ticket, the customer's booking list and the transactional LINE messages. Output: E-ticket and messages
- 32: Implement the QR scan, the ticket details, the check-in, the invalid-ticket escalation, the no-show release and the name lookup. Output: Front Staff check-in functions
- 33: Implement the live booking view, the ticket escalation, the manual overrides and the degraded-mode switch. Output: Manager's live view and exception functions
- 34: Implement the audit trail, the daily backup with Excel export, the consent and profile access and the push-message budget. Output: System functions of Release 1.0
- 35: Run the load test (5 transactions a second at booking-open time), the system test of Release 1.0 and assemble the IOC review. Output: Load-test and system-test records, IOC decision
- 37: Run the acceptance tests of the two main use cases with the Manager and the Front Staff. Output: Acceptance records
- 38: Train the Manager and the Front Staff and hand over the user guide. Output: Training records, user guide
- 39: Set up the production hosting, the domain and the gateway merchant account of La Loy, and migrate the current bookings. Output: Production system, migrated data
- 40: Support the first concert nights on site, fix the defects found and declare Release 1.0 in operation. Output: Go-live record, Release 1.0 in operation
- 42: Implement the reminder scheduling and the scheduled LINE reminders within the push-message budget. Output: Reminder functions
- 43: Implement the grace extension, the waitlist and the waitlist offer (rules decided by the Owner, RISK-08). Output: Grace and waitlist functions
- 44: Implement the official transfer of a confirmed booking to another LINE account. Output: Transfer function
- 45: Implement the booking, revenue, artist-popularity and customer-history reports with export to Excel. Output: Reports
- 46: Integrate Release 2.0, run the regression and system tests and the C3 assessment. Output: Tested Release 2.0, iteration assessment
- 47: Run the acceptance tests of the new features with the Manager and train the staff on them. Output: Acceptance and training records
- 48: Deploy Release 2.0, support the first concert nights and declare Release 2.0 in operation. Output: Go-live record, Release 2.0 in operation, pilot year begins
- 50: Support the pilot restaurant on concert nights (on-call engineer) and maintain the system: 8 hours a month, costed as operating expenditure of Year 1 in Milestone 1 (Table 3.6), outside the 2,632 development hours. Output: Support log, maintenance releases
- 52: Design and implement the multi-tenant data model, the tenant isolation and the migration path of La Loy's data. Output: Multi-tenant core
- 53: Implement the Free, Standard and Premium plans, their limits and the automatic enforcement of the limits. Output: Plan and limit functions
- 54: Implement the subscription billing and the setup-fee invoicing; register the company and publish the terms of service, privacy policy and data-processing agreement. Output: Billing functions, company registration, legal documents
- 55: Implement the self-service onboarding of a restaurant (zone map, packages, gateway and LINE set-up) and the service administration console. Output: Onboarding and administration functions
- 56: Run the multi-tenant security test, the load test and the system test of Release 2.1 and the C4 assessment. Output: Test records, iteration assessment
- 57: Migrate La Loy to the productized service, release the Free-plan sign-up and hand over to the support routine. Output: La Loy on the productized service, Release 2.1 in operation
